# ProyectoPreliminar_actualizado

How a schedule from MS Project changed from version to version. A marks actual dates.

## Version 1 (saved 2015-09-23, file ProyectoPreliminar_actualizado.mpp)

| ID | WBS | Task | Duration | Start | Finish | Predecessors | Total float |
| --- | --- | --- | --- | --- | --- | --- | --- |
| 1 | 1 | **Etapa 1** | 20.35d | 2015-09-24 | 2015-10-14 |  |  |
| 2 | 1.1 | **Módulo Usuario** | 19d | 2015-09-24 | 2015-10-13 |  | -7.65d |
| 3 | 1.1.1 | **Diseño** | 9d | 2015-09-24 | 2015-10-05 |  | -7.65d |
| 4 | 1.1.1.1 | **Diseño preliminar aplicación** | 3d | 2015-09-24 | 2015-09-28 |  | -7.65d |
| 5 |  | Creación de ventana | 3d | 2015-09-24 | 2015-09-28 |  | -7.65d |
| 6 |  | Comprobar coherencia con requisitos de interfaz | 2d | 2015-09-24 | 2015-09-25 |  | -6.65d |
| 7 |  | Diseño preliminar de aplicación terminado | 0d | 2015-09-28 | 2015-09-28 | 5, 6 | -7.65d |
| 8 | 1.1.1.2 | **Diseño vistas** | 4d | 2015-09-28 | 2015-10-01 | 4 | -7.65d |
| 9 |  | Diseño vista búsqueda | 4d | 2015-09-28 | 2015-10-01 |  | -7.65d |
| 10 |  | Diseño vista resultados | 4d | 2015-09-28 | 2015-10-01 |  | -7.65d |
| 11 |  | Diseño vistas terminado | 0d | 2015-10-01 | 2015-10-01 | 9, 10 | -7.65d |
| 12 |  | Validación Diseño | 2d | 2015-10-01 | 2015-10-05 | 8, 4 | -7.65d |
| 13 |  | Diseño terminado | 0d | 2015-10-05 | 2015-10-05 | 12 | -7.65d |
| 14 | 1.1.2 | **Implementación vista resultados** | 7d | 2015-10-05 | 2015-10-12 | 3 | -7.65d |
| 15 |  | Comunicación con servidor | 5d | 2015-10-05 | 2015-10-08 |  | -7.65d |
| 16 |  | Filtrado-Resultados | 5d | 2015-10-05 | 2015-10-08 |  | -3.65d |
| 17 |  | Look-and-feel | 4d | 2015-10-05 | 2015-10-07 |  | -2.65d |
| 18 |  | Testing vista resultados | 2d | 2015-10-08 | 2015-10-12 | 15, 16, 17 | -3.65d |
| 19 |  | Vista resultados terminada | 0d | 2015-10-12 | 2015-10-12 | 18 | -3.65d |
| 20 | 1.1.3 | **Implementación vista busquedas** | 7d | 2015-10-05 | 2015-10-12 | 3 | -3.65d |
| 21 |  | Comunicación con servidor | 5d | 2015-10-05 | 2015-10-08 | 15SS | -3.65d |
| 22 |  | Selección filtros | 4d | 2015-10-05 | 2015-10-07 |  | -2.65d |
| 23 |  | Look-and-feel | 4d | 2015-10-05 | 2015-10-07 |  | -2.65d |
| 24 |  | Testing vista busquedas | 2d | 2015-10-08 | 2015-10-12 | 21, 22, 23 | -3.65d |
| 25 |  | Vista busquedas terminada | 0d | 2015-10-12 | 2015-10-12 | 24 | -3.65d |
| 26 | 1.1.4 | **Implementación "Eye-candy"** | 7d | 2015-10-05 | 2015-10-12 | 3 | -3.65d |
| 27 |  | Splash Screen | 2d | 2015-10-05 | 2015-10-06 |  | -2.65d |
| 28 |  | Pantalla ayuda | 3d | 2015-10-05 | 2015-10-06 |  | -3.65d |
| 29 |  | Tool tips | 3d | 2015-10-05 | 2015-10-06 |  | -3.65d |
| 30 |  | Testing "Eye-candy" | 4d | 2015-10-06 | 2015-10-12 | 27, 28, 29 | -3.65d |
| 31 |  | "Eye-candy" terminado | 0d | 2015-10-12 | 2015-10-12 | 30 | -3.65d |
| 32 |  | Prueba de integración Interfaz | 3d | 2015-10-12 | 2015-10-13 | 3, 14, 20, 26 | -3.65d |
| 33 |  | Diseño e implementación interfaz gráfica terminada | 0d | 2015-10-13 | 2015-10-13 | 32 | -3.65d |
| 34 | 1.2 | **Módulo Servidor** | 23d | 2015-09-24 | 2015-10-19 |  | -7.65d |
| 35 | 1.2.1 | **Construcción base de datos** | 10d | 2015-09-24 | 2015-10-05 |  | -2.65d |
| 36 |  | Construcción DB | 4d | 2015-09-24 | 2015-09-29 |  | -2.65d |
| 37 |  | Poblar tablas con datos | 6d | 2015-09-29 | 2015-10-05 | 36 | 5.35d |
| 38 |  | Validación base de datos | 3d | 2015-09-29 | 2015-10-01 | 36 | 8.35d |
| 39 |  | Base de datos lista | 0d | 2015-10-05 | 2015-10-05 | 38, 37 | 5.35d |
| 40 | 1.2.2 | **Implementación servicio web** | 14d | 2015-09-29 | 2015-10-13 | 36 | -7.65d |
| 41 | 1.2.2.1 | **Conectar DB** | 9d | 2015-10-05 | 2015-10-13 |  | -7.65d |
| 42 | 1.2.2.1.1 | **Conexión módulo cliente** | 7d | 2015-10-05 | 2015-10-12 |  | -7.65d |
| 43 |  | Definir protocólo comunicación | 7d | 2015-10-05 | 2015-10-12 | 15SS | -7.65d |
| 44 |  | Establecer modelo datos | 4d | 2015-10-05 | 2015-10-07 | 43SS | -4.65d |
| 45 |  | Testing conexión DB | 2d | 2015-10-12 | 2015-10-13 | 42 | -7.65d |
| 46 |  | Conexión DB termianda | 0d | 2015-10-13 | 2015-10-13 | 45 | -7.65d |
| 47 | 1.2.2.2 | **Implementación busquedas** | 9d | 2015-10-05 | 2015-10-13 | 20SS | -7.65d |
| 48 |  | Búsqueda por filtro (tag) | 6d | 2015-10-05 | 2015-10-09 |  | -7.65d |
| 49 |  | Búsqueda por fecha | 6d | 2015-10-05 | 2015-10-09 |  | -7.65d |
| 50 |  | Búsqueda por bloque libre | 6d | 2015-10-05 | 2015-10-09 |  | -7.65d |
| 51 |  | Testing implementación busquedas | 3d | 2015-10-09 | 2015-10-13 | 48, 49, 50 | -7.65d |
| 52 |  | Sistema búsquedas terminado | 0d | 2015-10-13 | 2015-10-13 | 51 | -7.65d |
| 53 |  | Manejo excepciones | 6d | 2015-10-06 | 2015-10-13 | 47FF | -7.65d |
| 54 |  | Definición modelo de datos | 6d | 2015-09-29 | 2015-10-05 |  | 0.35d |
| 55 |  | Implementacion servicio web terminada | 0d | 2015-10-13 | 2015-10-13 | 41, 47, 53, 54 | -7.65d |
| 56 |  | Prueba de integración 2 (Conexión de DB e implementación de búsquedas ) | 5d | 2015-10-13 | 2015-10-19 | 40 | -7.65d |
| 57 |  | Diseño e implementación DB terminada | 0d | 2015-10-19 | 2015-10-19 | 56 | -7.65d |
| 58 |  | Prueba de integración final | 5d | 2015-10-19 | 2015-10-22 | 2, 34 | -7.65d |
| 59 |  | Etapa 1 finalizada | 0d | 2015-10-22 | 2015-10-22 | 58 | -7.65d |
| 60 |  | Entrega producto | 0d | 2015-10-22 | 2015-10-22 | 59 | -7.65d |

## Version 2 (saved 2015-09-23, file ProyectoPreliminar_actualizado2.mpp)

Note of the change: Merge branch 'master' of github.com:KukyNekoi/UTAL

Last finish 2015-10-22 → 2015-10-23 (+1d).

Added:

| ID | Task | Duration | Start | Finish | Predecessors |
| --- | --- | --- | --- | --- | --- |
| 32 | Validación y cambios a interfaz gráfica | 3d | 2015-10-09 | 2015-10-13 | 3, 14, 20, 26 |
| 57 | Validación y cambios a servicios web y DB | 3d | 2015-10-09 | 2015-10-13 | 41 |
| 60 | **Capacitaciones** | 11d | 2015-09-22 | 2015-10-02 |  |
| 61 | Uso de Git y GitHub 1 | 1d | 2015-09-22 | 2015-09-22 | 2SS |
| 62 | Uso de Git y GitHub 2 | 1d | 2015-10-01 | 2015-10-02 | 4, 36 |
| 63 | Desarrollo de servicios web utilizando Java y GlassFish 1 | 1d | 2015-09-22 | 2015-09-22 | 2SS |
| 64 | Desarrollo de servicios web utilizando Java y GlassFish 2 | 1d | 2015-09-30 | 2015-09-30 | 36FF |
| 65 | Diseño de interfaces gráficas para JavaFX | 1d | 2015-09-22 | 2015-09-22 | 2SS |
| 66 | Uso de bases de datos SQLite en Java 1 | 1d | 2015-09-22 | 2015-09-22 | 2SS |
| 67 | Uso de bases de datos SQLite en Java 2 | 1d | 2015-09-30 | 2015-09-30 | 36FF |
| 68 | Personal Capacitado | 0d | 2015-10-02 | 2015-10-02 | 61, 62, 63, 64, 65, 66, 67 |

Changed:

| ID | Task | Start | Finish | Duration | Total float | Predecessors | Other |
| --- | --- | --- | --- | --- | --- | --- | --- |
| 1 | **Etapa 1** | 2015-09-24 → 2015-09-22 (-2d) | 2015-10-14 → 2015-10-23 (+9d) | 20.35d → 32d | none → 0d |  |  |
| 2 | **Módulo Usuario** | 2015-09-24 → 2015-09-22 (-2d) | 2015-10-13 → 2015-10-16 (+3d) | 19d → 25d | -7.65d → 0d |  |  |
| 3 | **Diseño** | 2015-09-24 → 2015-09-22 (-2d) | 2015-10-05 → 2015-09-30 (-5d) | 9d → 10d | -7.65d → 0d |  |  |
| 4 | **Diseño preliminar aplicación** | 2015-09-24 → 2015-09-22 (-2d) | 2015-09-28 → 2015-09-23 (-5d) |  | -7.65d → 0d |  |  |
| 5 | Creación de ventana | 2015-09-24 → 2015-09-22 (-2d) | 2015-09-28 → 2015-09-23 (-5d) |  | -7.65d → 0d |  |  |
| 6 | Comprobar coherencia con requisitos de interfaz | 2015-09-24 → 2015-09-22 (-2d) | 2015-09-25 → 2015-09-23 (-2d) |  | -6.65d → 1d |  |  |
| 7 | Diseño preliminar de aplicación terminado | 2015-09-28 → 2015-09-23 (-5d) | 2015-09-28 → 2015-09-23 (-5d) |  | -7.65d → 0d |  |  |
| 8 | **Diseño vistas** | 2015-09-28 → 2015-09-23 (-5d) | 2015-10-01 → 2015-09-29 (-2d) |  | -7.65d → 0d |  |  |
| 9 | Diseño vista búsqueda | 2015-09-28 → 2015-09-23 (-5d) | 2015-10-01 → 2015-09-29 (-2d) |  | -7.65d → 0d |  |  |
| 10 | Diseño vista resultados | 2015-09-28 → 2015-09-23 (-5d) | 2015-10-01 → 2015-09-29 (-2d) |  | -7.65d → 0d |  |  |
| 11 | Diseño vistas terminado | 2015-10-01 → 2015-09-29 (-2d) | 2015-10-01 → 2015-09-29 (-2d) |  | -7.65d → 0d |  |  |
| 12 | Validación Diseño y cambios | 2015-10-01 → 2015-09-29 (-2d) | 2015-10-05 → 2015-09-30 (-5d) | 2d → 3d | -7.65d → 0d |  | was named Validación Diseño |
| 13 | Diseño terminado | 2015-10-05 → 2015-09-30 (-5d) | 2015-10-05 → 2015-09-30 (-5d) |  | -7.65d → 0d |  |  |
| 14 | **Implementación vista resultados** | 2015-10-05 → 2015-10-01 (-4d) | 2015-10-12 → 2015-10-09 (-3d) | 7d → 8d | -7.65d → 0d |  |  |
| 15 | Comunicación con servidor | 2015-10-05 → 2015-10-01 (-4d) | 2015-10-08 → 2015-10-06 (-2d) |  | -7.65d → 0d |  |  |
| 16 | Filtrado-Resultados | 2015-10-05 → 2015-10-01 (-4d) | 2015-10-08 → 2015-10-06 (-2d) |  | -3.65d → 3d |  |  |
| 17 | Look-and-feel | 2015-10-05 → 2015-10-01 (-4d) | 2015-10-07 → 2015-10-06 (-1d) |  | -2.65d → 4d |  |  |
| 18 | Testing, validación y cambios vista resultados | 2015-10-08 → 2015-10-06 (-2d) | 2015-10-12 → 2015-10-09 (-3d) | 2d → 3d | -3.65d → 3d |  | was named Testing vista resultados |
| 19 | Vista resultados terminada | 2015-10-12 → 2015-10-09 (-3d) | 2015-10-12 → 2015-10-09 (-3d) |  | -3.65d → 3d |  |  |
| 20 | **Implementación vista busquedas** | 2015-10-05 → 2015-10-01 (-4d) | 2015-10-12 → 2015-10-09 (-3d) | 7d → 8d | -3.65d → 3d |  |  |
| 21 | Comunicación con servidor | 2015-10-05 → 2015-10-01 (-4d) | 2015-10-08 → 2015-10-06 (-2d) |  | -3.65d → 3d |  |  |
| 22 | Selección filtros | 2015-10-05 → 2015-10-01 (-4d) | 2015-10-07 → 2015-10-06 (-1d) |  | -2.65d → 4d |  |  |
| 23 | Look-and-feel | 2015-10-05 → 2015-10-01 (-4d) | 2015-10-07 → 2015-10-06 (-1d) |  | -2.65d → 4d |  |  |
| 24 | Testing, validación y cambios vista busquedas | 2015-10-08 → 2015-10-06 (-2d) | 2015-10-12 → 2015-10-09 (-3d) | 2d → 3d | -3.65d → 3d |  | was named Testing vista busquedas |
| 25 | Vista busquedas terminada | 2015-10-12 → 2015-10-09 (-3d) | 2015-10-12 → 2015-10-09 (-3d) |  | -3.65d → 3d |  |  |
| 26 | **Implementación "Eye-candy"** | 2015-10-05 → 2015-10-01 (-4d) | 2015-10-12 → 2015-10-08 (-4d) |  | -3.65d → 4d |  |  |
| 27 | Splash Screen | 2015-10-05 → 2015-10-01 (-4d) | 2015-10-06 → 2015-10-02 (-4d) |  | -2.65d → 5d |  |  |
| 28 | Pantalla ayuda | 2015-10-05 → 2015-10-01 (-4d) | 2015-10-06 → 2015-10-05 (-1d) |  | -3.65d → 4d |  |  |
| 29 | Tool tips | 2015-10-05 → 2015-10-01 (-4d) | 2015-10-06 → 2015-10-05 (-1d) |  | -3.65d → 4d |  |  |
| 30 | Testing, validación y cambios "Eye-candy" | 2015-10-06 → 2015-10-05 (-1d) | 2015-10-12 → 2015-10-08 (-4d) |  | -3.65d → 4d |  | was named Testing "Eye-candy" |
| 31 | "Eye-candy" terminado | 2015-10-12 → 2015-10-08 (-4d) | 2015-10-12 → 2015-10-08 (-4d) |  | -3.65d → 4d |  |  |
| 33 | Prueba de integración Interfaz | 2015-10-12 → 2015-10-13 (+1d) | 2015-10-13 → 2015-10-16 (+3d) |  | -3.65d → 2d | 3, 14, 20, 26 → 32, 57 |  |
| 34 | Diseño e implementación interfaz gráfica terminada | 2015-10-13 → 2015-10-16 (+3d) | 2015-10-13 → 2015-10-16 (+3d) |  | -3.65d → 2d |  |  |
| 35 | **Módulo Servidor** | 2015-09-24 → 2015-09-22 (-2d) |  | 23d → 27d | -7.65d → 0d |  |  |
| 36 | **Construcción base de datos** | 2015-09-24 → 2015-09-22 (-2d) | 2015-10-05 → 2015-09-30 (-5d) |  | -2.65d → 6d |  |  |
| 37 | Construcción DB | 2015-09-24 → 2015-09-22 (-2d) | 2015-09-29 → 2015-09-25 (-4d) |  | -2.65d → 6d |  |  |
| 38 | Poblar tablas con datos | 2015-09-29 → 2015-09-25 (-4d) | 2015-10-05 → 2015-09-30 (-5d) |  | 5.35d → 16d |  |  |
| 39 | Validación base de datos | 2015-09-29 → 2015-09-25 (-4d) | 2015-10-01 → 2015-09-29 (-2d) |  | 8.35d → 19d |  |  |
| 40 | Base de datos lista | 2015-10-05 → 2015-09-30 (-5d) | 2015-10-05 → 2015-09-30 (-5d) |  | 5.35d → 16d |  |  |
| 41 | **Implementación servicio web** | 2015-09-29 → 2015-09-25 (-4d) | 2015-10-13 → 2015-10-09 (-4d) | 14d → 15d | -7.65d → 0d |  |  |
| 42 | **Conectar DB** | 2015-10-05 → 2015-10-01 (-4d) | 2015-10-13 → 2015-10-09 (-4d) |  | -7.65d → 0d |  |  |
| 43 | **Conexión módulo cliente** | 2015-10-05 → 2015-10-01 (-4d) | 2015-10-12 → 2015-10-08 (-4d) |  | -7.65d → 0d |  |  |
| 44 | Definir protocólo comunicación | 2015-10-05 → 2015-10-01 (-4d) | 2015-10-12 → 2015-10-08 (-4d) |  | -7.65d → 0d |  |  |
| 45 | Establecer modelo datos | 2015-10-05 → 2015-10-01 (-4d) | 2015-10-07 → 2015-10-06 (-1d) |  | -4.65d → 3d |  |  |
| 46 | Testing, validación y cambios conexión DB | 2015-10-12 → 2015-10-08 (-4d) | 2015-10-13 → 2015-10-09 (-4d) |  | -7.65d → 0d |  | was named Testing conexión DB |
| 47 | Conexión DB termianda | 2015-10-13 → 2015-10-09 (-4d) | 2015-10-13 → 2015-10-09 (-4d) |  | -7.65d → 0d |  |  |
| 48 | **Implementación busquedas** | 2015-10-05 → 2015-10-01 (-4d) | 2015-10-13 → 2015-10-09 (-4d) |  | -7.65d → 0d |  |  |
| 49 | Búsqueda por filtro (tag) | 2015-10-05 → 2015-10-01 (-4d) | 2015-10-09 → 2015-10-07 (-2d) |  | -7.65d → 0d |  |  |
| 50 | Búsqueda por fecha | 2015-10-05 → 2015-10-01 (-4d) | 2015-10-09 → 2015-10-07 (-2d) |  | -7.65d → 0d |  |  |
| 51 | Búsqueda por bloque libre | 2015-10-05 → 2015-10-01 (-4d) | 2015-10-09 → 2015-10-07 (-2d) |  | -7.65d → 0d |  |  |
| 52 | Testing, validación y cambios implementación busquedas | 2015-10-09 → 2015-10-07 (-2d) | 2015-10-13 → 2015-10-09 (-4d) |  | -7.65d → 0d |  | was named Testing implementación busquedas |
| 53 | Sistema búsquedas terminado | 2015-10-13 → 2015-10-09 (-4d) | 2015-10-13 → 2015-10-09 (-4d) |  | -7.65d → 0d |  |  |
| 54 | Manejo excepciones | 2015-10-06 → 2015-10-05 (-1d) | 2015-10-13 → 2015-10-09 (-4d) |  | -7.65d → 0d |  |  |
| 55 | Definición modelo de datos | 2015-09-29 → 2015-09-25 (-4d) | 2015-10-05 → 2015-09-30 (-5d) |  | 0.35d → 9d |  |  |
| 56 | Implementacion servicio web terminada | 2015-10-13 → 2015-10-09 (-4d) | 2015-10-13 → 2015-10-09 (-4d) |  | -7.65d → 0d |  |  |
| 58 | Prueba de integración 2 (Conexión de DB e implementación de búsquedas ) |  |  |  | -7.65d → 0d | 41 → 57 |  |
| 69 | Prueba de integración final |  | 2015-10-22 → 2015-10-23 (+1d) |  | -7.65d → 0d | 2, 35 → 2, 35, 60 |  |
| 70 | Etapa 1 finalizada | 2015-10-22 → 2015-10-23 (+1d) | 2015-10-22 → 2015-10-23 (+1d) |  | -7.65d → 0d |  |  |
| 71 | Entrega producto | 2015-10-22 → 2015-10-23 (+1d) | 2015-10-22 → 2015-10-23 (+1d) |  | -7.65d → 0d |  |  |

## Version 3 (saved 2015-09-23, file Replanificación.mpp)

Last finish 2015-10-23 → 2015-10-19 (-4d).

Added:

| ID | Task | Duration | Start | Finish | Predecessors |
| --- | --- | --- | --- | --- | --- |
| 14 | **Implementación Interfaz** | 8d | 2015-09-30 | 2015-10-08 | 3 |

Removed: 62 Uso de Git y GitHub 2

Changed:

| ID | Task | Start | Finish | Duration | Total float | Predecessors | Other |
| --- | --- | --- | --- | --- | --- | --- | --- |
| 1 | **Etapa 1** |  | 2015-10-23 → 2015-10-19 (-4d) | 32d → 27d |  |  |  |
| 2 | **Módulo Usuario** |  | 2015-10-16 → 2015-10-13 (-3d) | 25d → 22d |  |  |  |
| 3 | **Diseño** |  |  | 10d → 9d |  |  |  |
| 4 | **Diseño preliminar aplicación** |  | 2015-09-23 → 2015-09-25 (+2d) | 3d → 4d | 0d → none |  |  |
| 5 | Creación de ventanas |  |  |  | 0d → 1d |  | was named Creación de ventana |
| 6 | Comprobar coherencia con requisitos de interfaz |  | 2015-09-23 → 2015-09-22 (-1d) | 2d → 1d | 1d → 3d |  |  |
| 8 | **Diseño vistas** | 2015-09-23 → 2015-09-25 (+2d) |  | 4d → 3d |  |  |  |
| 9 | Diseño vista búsqueda | 2015-09-23 → 2015-09-25 (+2d) |  | 4d → 3d |  |  |  |
| 10 | Diseño vista resultados | 2015-09-23 → 2015-09-25 (+2d) |  | 4d → 3d |  |  |  |
| 12 | Validación Diseño y cambios |  |  | 3d → 2d |  |  |  |
| 15 | **Implementación vista resultados** | 2015-10-01 → 2015-09-30 (-1d) | 2015-10-09 → 2015-10-08 (-1d) |  |  | 3 → none |  |
| 16 | Comunicación con servidor | 2015-10-01 → 2015-09-30 (-1d) |  |  |  |  |  |
| 17 | Filtrado-Resultados | 2015-10-01 → 2015-09-30 (-1d) |  |  | 3d → 0d |  |  |
| 18 | Look-and-feel | 2015-10-01 → 2015-09-30 (-1d) | 2015-10-06 → 2015-10-05 (-1d) |  | 4d → 1d |  |  |
| 19 | Testing, validación y cambios vista resultados |  | 2015-10-09 → 2015-10-08 (-1d) |  | 3d → 0d |  |  |
| 20 | Vista resultados terminada | 2015-10-09 → 2015-10-08 (-1d) | 2015-10-09 → 2015-10-08 (-1d) |  | 3d → 0d |  |  |
| 21 | **Implementación vista busquedas** | 2015-10-01 → 2015-09-30 (-1d) | 2015-10-09 → 2015-10-08 (-1d) |  | 3d → 0d | 3 → none |  |
| 22 | Comunicación con servidor | 2015-10-01 → 2015-09-30 (-1d) |  |  | 3d → 0d |  |  |
| 23 | Selección filtros | 2015-10-01 → 2015-09-30 (-1d) | 2015-10-06 → 2015-10-02 (-4d) | 4d → 3d | 4d → 2d |  |  |
| 24 | Look-and-feel | 2015-10-01 → 2015-09-30 (-1d) | 2015-10-06 → 2015-10-02 (-4d) | 4d → 3d | 4d → 2d |  |  |
| 25 | Testing, validación y cambios vista busquedas |  | 2015-10-09 → 2015-10-08 (-1d) |  | 3d → 0d |  |  |
| 26 | Vista busquedas terminada | 2015-10-09 → 2015-10-08 (-1d) | 2015-10-09 → 2015-10-08 (-1d) |  | 3d → 0d |  |  |
| 27 | **Implementación "Eye-candy"** | 2015-10-01 → 2015-09-30 (-1d) | 2015-10-08 → 2015-10-06 (-2d) | 7d → 5d | 4d → 3d | 3 → none |  |
| 28 | Splash Screen | 2015-10-01 → 2015-09-30 (-1d) |  |  | 5d → 4d |  |  |
| 29 | Pantalla ayuda | 2015-10-01 → 2015-09-30 (-1d) | 2015-10-05 → 2015-10-02 (-3d) |  | 4d → 3d |  |  |
| 30 | Tool tips | 2015-10-01 → 2015-09-30 (-1d) | 2015-10-05 → 2015-10-02 (-3d) |  | 4d → 3d |  |  |
| 31 | Testing, validación y cambios "Eye-candy" | 2015-10-05 → 2015-10-02 (-3d) | 2015-10-08 → 2015-10-06 (-2d) | 4d → 2d | 4d → 3d |  |  |
| 32 | "Eye-candy" terminado | 2015-10-08 → 2015-10-06 (-2d) | 2015-10-08 → 2015-10-06 (-2d) |  | 4d → 3d |  |  |
| 33 | Validación y cambios a interfaz gráfica | 2015-10-09 → 2015-10-08 (-1d) | 2015-10-13 → 2015-10-12 (-1d) |  | 3d → 0d | 3, 15, 21, 27 → 14 |  |
| 34 | Prueba de integración Interfaz | 2015-10-13 → 2015-10-12 (-1d) | 2015-10-16 → 2015-10-13 (-3d) | 3d → 2d | 2d → 0d |  |  |
| 35 | Diseño e implementación interfaz gráfica terminada | 2015-10-16 → 2015-10-13 (-3d) | 2015-10-16 → 2015-10-13 (-3d) |  | 2d → 0d |  |  |
| 36 | **Módulo Servidor** |  | 2015-10-19 → 2015-10-13 (-6d) | 27d → 22d |  |  |  |
| 37 | **Construcción base de datos** |  | 2015-09-30 → 2015-09-28 (-2d) | 10d → 6d | 6d → 7d |  |  |
| 38 | Construcción DB |  | 2015-09-25 → 2015-09-23 (-2d) | 4d → 2d | 6d → 7d |  |  |
| 39 | Poblar tablas con datos | 2015-09-25 → 2015-09-23 (-2d) | 2015-09-30 → 2015-09-28 (-2d) | 6d → 4d |  |  |  |
| 40 | Validación base de datos | 2015-09-25 → 2015-09-23 (-2d) | 2015-09-29 → 2015-09-25 (-4d) |  | 19d → 17d |  |  |
| 41 | Base de datos lista | 2015-09-30 → 2015-09-28 (-2d) | 2015-09-30 → 2015-09-28 (-2d) |  |  |  |  |
| 42 | **Implementación servicio web** | 2015-09-25 → 2015-09-23 (-2d) | 2015-10-09 → 2015-10-08 (-1d) |  |  |  |  |
| 43 | **Conectar DB** | 2015-10-01 → 2015-09-30 (-1d) | 2015-10-09 → 2015-10-06 (-3d) | 9d → 6d | 0d → 2d |  |  |
| 44 | **Conexión módulo cliente** | 2015-10-01 → 2015-09-30 (-1d) | 2015-10-08 → 2015-10-05 (-3d) | 7d → 4d | 0d → 2d |  |  |
| 45 | Definir protocólo comunicación | 2015-10-01 → 2015-09-30 (-1d) | 2015-10-08 → 2015-10-05 (-3d) | 7d → 4d | 0d → 2d |  |  |
| 46 | Establecer modelo datos | 2015-10-01 → 2015-09-30 (-1d) | 2015-10-06 → 2015-10-05 (-1d) |  | 3d → 2d |  |  |
| 47 | Testing, validación y cambios conexión DB | 2015-10-08 → 2015-10-05 (-3d) | 2015-10-09 → 2015-10-06 (-3d) |  | 0d → 2d |  |  |
| 48 | Conexión DB termianda | 2015-10-09 → 2015-10-06 (-3d) | 2015-10-09 → 2015-10-06 (-3d) |  | 0d → 2d |  |  |
| 49 | **Implementación busquedas** | 2015-10-01 → 2015-09-30 (-1d) | 2015-10-09 → 2015-10-08 (-1d) | 9d → 8d |  |  |  |
| 50 | Búsqueda por filtro (tag) | 2015-10-01 → 2015-09-30 (-1d) | 2015-10-07 → 2015-10-06 (-1d) |  |  |  |  |
| 51 | Búsqueda por fecha | 2015-10-01 → 2015-09-30 (-1d) | 2015-10-07 → 2015-10-06 (-1d) |  |  |  |  |
| 52 | Búsqueda por bloque libre | 2015-10-01 → 2015-09-30 (-1d) | 2015-10-07 → 2015-10-06 (-1d) |  |  |  |  |
| 53 | Testing, validación y cambios implementación busquedas | 2015-10-07 → 2015-10-06 (-1d) | 2015-10-09 → 2015-10-08 (-1d) | 3d → 2d |  |  |  |
| 54 | Sistema búsquedas terminado | 2015-10-09 → 2015-10-08 (-1d) | 2015-10-09 → 2015-10-08 (-1d) |  |  |  |  |
| 55 | Manejo excepciones | 2015-10-05 → 2015-10-02 (-3d) | 2015-10-09 → 2015-10-08 (-1d) |  |  |  |  |
| 56 | Definición modelo de datos | 2015-09-25 → 2015-09-23 (-2d) | 2015-09-30 → 2015-09-25 (-5d) | 6d → 2d | 9d → 13d |  |  |
| 57 | Implementacion servicio web terminada | 2015-10-09 → 2015-10-08 (-1d) | 2015-10-09 → 2015-10-08 (-1d) |  |  |  |  |
| 58 | Validación y cambios a servicios web y DB | 2015-10-09 → 2015-10-08 (-1d) | 2015-10-13 → 2015-10-12 (-1d) |  |  |  |  |
| 59 | Prueba de integración 2 (Conexión de DB e implementación de búsquedas ) | 2015-10-13 → 2015-10-12 (-1d) | 2015-10-19 → 2015-10-13 (-6d) | 5d → 2d |  |  |  |
| 60 | Diseño e implementación DB terminada | 2015-10-19 → 2015-10-13 (-6d) | 2015-10-19 → 2015-10-13 (-6d) |  |  |  |  |
| 61 | **Capacitaciones** |  | 2015-10-02 → 2015-09-28 (-4d) | 11d → 6d |  |  |  |
| 62 | Uso de Git y GitHub |  |  |  | 26d → 21d |  | was named Uso de Git y GitHub 1 |
| 64 | Desarrollo de servicios web utilizando Java y GlassFish 2 | 2015-09-30 → 2015-09-25 (-5d) | 2015-09-30 → 2015-09-28 (-2d) |  | 17d → 16d |  |  |
| 67 | Uso de bases de datos SQLite en Java 2 | 2015-09-30 → 2015-09-25 (-5d) | 2015-09-30 → 2015-09-28 (-2d) |  | 17d → 16d |  |  |
| 68 | Personal Capacitado | 2015-10-02 → 2015-09-28 (-4d) | 2015-10-02 → 2015-09-28 (-4d) |  |  | 62, Uso de Git y GitHub 2, 63, 64, 65, 66, 67 → 62, 63, 64, 65, 66, 67 |  |
| 69 | Prueba de integración final | 2015-10-19 → 2015-10-13 (-6d) | 2015-10-23 → 2015-10-19 (-4d) |  |  |  |  |
| 70 | Etapa 1 finalizada | 2015-10-23 → 2015-10-19 (-4d) | 2015-10-23 → 2015-10-19 (-4d) |  |  |  |  |
| 71 | Entrega producto | 2015-10-23 → 2015-10-19 (-4d) | 2015-10-23 → 2015-10-19 (-4d) |  |  |  |  |

## Version 4 (data date 2015-09-25, saved 2015-10-01, file Replanificación4.mpp)

Last finish 2015-10-19 → 2015-10-21 (+2d). Complete tasks 0 → 4.

Changed:

| ID | Task | Start | Finish | Duration | Complete | Total float | Predecessors |
| --- | --- | --- | --- | --- | --- | --- | --- |
| 1 | **Etapa 1** | 2015-09-22 → 2015-09-24 A (+2d) | 2015-10-19 → 2015-10-21 (+2d) | 27d → 26d | 0% → 10% |  |  |
| 2 | **Módulo Usuario** | 2015-09-22 → 2015-09-24 A (+2d) | 2015-10-13 → 2015-10-15 (+2d) | 22d → 21d | 0% → 9% |  |  |
| 3 | **Diseño** | 2015-09-22 → 2015-09-24 A (+2d) | 2015-09-30 → 2015-10-02 (+2d) | 9d → 8d | 0% → 40% |  |  |
| 4 | **Diseño preliminar aplicación** | 2015-09-22 → 2015-09-24 A (+2d) | 2015-09-25 → 2015-09-28 (+3d) | 4d → 3d | 0% → 45% | none → 0d |  |
| 5 | Creación de ventanas | 2015-09-22 → 2015-09-24 A (+2d) | 2015-09-23 → 2015-09-28 (+5d) |  | 0% → 60% | 1d → 0d |  |
| 6 | Comprobar coherencia con requisitos de interfaz | 2015-09-22 → 2015-09-24 (+2d) | 2015-09-22 → 2015-09-25 (+3d) |  |  | 3d → 2d |  |
| 7 | Diseño preliminar de aplicación terminado | 2015-09-23 → 2015-09-28 (+5d) | 2015-09-23 → 2015-09-28 (+5d) |  |  | 1d → 0d |  |
| 8 | **Diseño vistas** | 2015-09-25 → 2015-09-28 A (+3d) | 2015-09-29 → 2015-09-30 (+1d) |  | 0% → 50% |  |  |
| 9 | Diseño vista búsqueda | 2015-09-25 → 2015-09-28 A (+3d) | 2015-09-29 → 2015-09-30 (+1d) |  | 0% → 60% |  |  |
| 10 | Diseño vista resultados | 2015-09-25 → 2015-09-28 A (+3d) | 2015-09-29 → 2015-09-30 (+1d) |  | 0% → 40% |  |  |
| 11 | Diseño vistas terminado | 2015-09-29 → 2015-09-30 (+1d) | 2015-09-29 → 2015-09-30 (+1d) |  |  |  |  |
| 12 | Validación Diseño y cambios | 2015-09-29 → 2015-09-30 (+1d) | 2015-09-30 → 2015-10-02 (+2d) |  |  |  |  |
| 13 | Diseño terminado | 2015-09-30 → 2015-10-02 (+2d) | 2015-09-30 → 2015-10-02 (+2d) |  |  |  |  |
| 14 | **Implementación Interfaz** | 2015-09-30 → 2015-10-02 A (+2d) | 2015-10-08 → 2015-10-12 (+4d) |  | 0% → 1% |  |  |
| 15 | **Implementación vista resultados** | 2015-09-30 → 2015-10-02 (+2d) | 2015-10-08 → 2015-10-12 (+4d) |  |  |  |  |
| 16 | Comunicación con servidor | 2015-09-30 → 2015-10-02 (+2d) | 2015-10-06 → 2015-10-07 (+1d) |  |  |  |  |
| 17 | Filtrado-Resultados | 2015-09-30 → 2015-10-02 (+2d) | 2015-10-06 → 2015-10-07 (+1d) |  |  |  |  |
| 18 | Look-and-feel | 2015-09-30 → 2015-10-02 (+2d) | 2015-10-05 → 2015-10-06 (+1d) |  |  |  |  |
| 19 | Testing, validación y cambios vista resultados | 2015-10-06 → 2015-10-07 (+1d) | 2015-10-08 → 2015-10-12 (+4d) |  |  |  |  |
| 20 | Vista resultados terminada | 2015-10-08 → 2015-10-12 (+4d) | 2015-10-08 → 2015-10-12 (+4d) |  |  |  |  |
| 21 | **Implementación vista busquedas** | 2015-09-30 → 2015-10-02 (+2d) | 2015-10-08 → 2015-10-12 (+4d) |  |  |  |  |
| 22 | Comunicación con servidor | 2015-09-30 → 2015-10-02 (+2d) | 2015-10-06 → 2015-10-07 (+1d) |  |  |  |  |
| 23 | Selección filtros | 2015-09-30 → 2015-10-02 (+2d) | 2015-10-02 → 2015-10-06 (+4d) |  |  |  |  |
| 24 | Look-and-feel | 2015-09-30 → 2015-10-02 (+2d) | 2015-10-02 → 2015-10-06 (+4d) |  |  |  |  |
| 25 | Testing, validación y cambios vista busquedas | 2015-10-06 → 2015-10-07 (+1d) | 2015-10-08 → 2015-10-12 (+4d) |  |  |  |  |
| 26 | Vista busquedas terminada | 2015-10-08 → 2015-10-12 (+4d) | 2015-10-08 → 2015-10-12 (+4d) |  |  |  |  |
| 27 | **Implementación "Eye-candy"** | 2015-09-30 → 2015-10-02 A (+2d) | 2015-10-06 → 2015-10-07 (+1d) |  | 0% → 6% |  |  |
| 28 | Splash Screen | 2015-09-30 → 2015-10-02 (+2d) | 2015-10-02 → 2015-10-05 (+3d) |  |  |  |  |
| 29 | Pantalla ayuda | 2015-09-30 → 2015-10-02 A (+2d) | 2015-10-02 → 2015-10-06 (+4d) |  | 0% → 20% |  |  |
| 30 | Tool tips | 2015-09-30 → 2015-10-02 (+2d) | 2015-10-02 → 2015-10-06 (+4d) |  |  |  |  |
| 31 | Testing, validación y cambios "Eye-candy" | 2015-10-02 → 2015-10-06 (+4d) | 2015-10-06 → 2015-10-07 (+1d) |  |  |  |  |
| 32 | "Eye-candy" terminado | 2015-10-06 → 2015-10-07 (+1d) | 2015-10-06 → 2015-10-07 (+1d) |  |  |  |  |
| 33 | Validación y cambios a interfaz gráfica | 2015-10-08 → 2015-10-12 (+4d) | 2015-10-12 → 2015-10-13 (+1d) |  |  |  |  |
| 34 | Prueba de integración Interfaz | 2015-10-12 → 2015-10-13 (+1d) | 2015-10-13 → 2015-10-15 (+2d) |  |  |  |  |
| 35 | Diseño e implementación interfaz gráfica terminada | 2015-10-13 → 2015-10-15 (+2d) | 2015-10-13 → 2015-10-15 (+2d) |  |  |  |  |
| 36 | **Módulo Servidor** | 2015-09-22 → 2015-09-24 A (+2d) | 2015-10-13 → 2015-10-15 (+2d) | 22d → 21d | 0% → 8% |  |  |
| 37 | **Construcción base de datos** | 2015-09-22 → 2015-09-24 A (+2d) | 2015-09-28 → 2015-09-30 (+2d) |  | 0% → 49% | 7d → 4d |  |
| 38 | Construcción DB | 2015-09-22 → 2015-09-24 A (+2d) | 2015-09-23 → 2015-09-28 A (+5d) | 2d → 3d | 0% → 100% | 7d → none |  |
| 39 | Poblar tablas con datos | 2015-09-23 → 2015-09-28 (+5d) | 2015-09-28 → 2015-09-29 (+1d) | 4d → 2d |  | 16d → 5d |  |
| 40 | Validación base de datos | 2015-09-23 → 2015-09-28 A (+5d) | 2015-09-25 → 2015-09-30 (+5d) |  | 0% → 30% | 17d → 4d |  |
| 41 | Base de datos lista | 2015-09-28 → 2015-09-30 (+2d) | 2015-09-28 → 2015-09-30 (+2d) |  |  | 16d → 4d |  |
| 42 | **Implementación servicio web** | 2015-09-23 → 2015-09-28 (+5d) | 2015-10-08 → 2015-10-12 (+4d) | 15d → 13d |  |  |  |
| 45 | Definir protocólo comunicación |  |  |  |  | 2d → 4d | 16SS → 37 |
| 49 | **Implementación busquedas** | 2015-09-30 → 2015-10-02 (+2d) | 2015-10-08 → 2015-10-12 (+4d) |  |  |  |  |
| 50 | Búsqueda por filtro (tag) | 2015-09-30 → 2015-10-02 (+2d) | 2015-10-06 → 2015-10-08 (+2d) |  |  |  |  |
| 51 | Búsqueda por fecha | 2015-09-30 → 2015-10-02 (+2d) | 2015-10-06 → 2015-10-08 (+2d) |  |  |  |  |
| 52 | Búsqueda por bloque libre | 2015-09-30 → 2015-10-02 (+2d) | 2015-10-06 → 2015-10-08 (+2d) |  |  |  |  |
| 53 | Testing, validación y cambios implementación busquedas | 2015-10-06 → 2015-10-08 (+2d) | 2015-10-08 → 2015-10-12 (+4d) |  |  |  |  |
| 54 | Sistema búsquedas terminado | 2015-10-08 → 2015-10-12 (+4d) | 2015-10-08 → 2015-10-12 (+4d) |  |  |  |  |
| 55 | Manejo excepciones | 2015-10-02 → 2015-10-05 (+3d) | 2015-10-08 → 2015-10-12 (+4d) |  |  |  |  |
| 56 | Definición modelo de datos | 2015-09-23 → 2015-09-28 (+5d) | 2015-09-25 → 2015-09-29 (+4d) |  |  | 13d → 11d |  |
| 57 | Implementacion servicio web terminada | 2015-10-08 → 2015-10-12 (+4d) | 2015-10-08 → 2015-10-12 (+4d) |  |  |  |  |
| 58 | Validación y cambios a servicios web y DB | 2015-10-08 → 2015-10-12 (+4d) | 2015-10-12 → 2015-10-13 (+1d) |  |  |  |  |
| 59 | Prueba de integración 2 (Conexión de DB e implementación de búsquedas ) | 2015-10-12 → 2015-10-13 (+1d) | 2015-10-13 → 2015-10-15 (+2d) |  |  |  |  |
| 60 | Diseño e implementación DB terminada | 2015-10-13 → 2015-10-15 (+2d) | 2015-10-13 → 2015-10-15 (+2d) |  |  |  |  |
| 61 | **Capacitaciones** | 2015-09-22 → 2015-09-24 A (+2d) | 2015-09-28 → 2015-09-30 (+2d) |  | 0% → 50% | 16d → 15d |  |
| 62 | Uso de Git y GitHub | 2015-09-22 → 2015-09-24 A (+2d) | 2015-09-22 → 2015-09-25 A (+3d) |  | 0% → 100% | 21d → none |  |
| 63 | Desarrollo de servicios web utilizando Java y GlassFish 1 | 2015-09-22 → 2015-09-24 A (+2d) | 2015-09-22 → 2015-09-25 A (+3d) |  | 0% → 100% | 21d → none |  |
| 64 | Desarrollo de servicios web utilizando Java y GlassFish 2 | 2015-09-25 → 2015-09-29 (+4d) | 2015-09-28 → 2015-09-30 (+2d) |  |  | 16d → 15d |  |
| 65 | Diseño de interfaces gráficas para JavaFX | 2015-09-22 → 2015-09-24 (+2d) | 2015-09-22 → 2015-09-25 (+3d) |  |  | 21d → 20d |  |
| 66 | Uso de bases de datos SQLite en Java 1 | 2015-09-22 → 2015-09-24 A (+2d) | 2015-09-22 → 2015-09-25 A (+3d) |  | 0% → 100% | 21d → none |  |
| 67 | Uso de bases de datos SQLite en Java 2 | 2015-09-25 → 2015-09-29 (+4d) | 2015-09-28 → 2015-09-30 (+2d) |  |  | 16d → 15d |  |
| 68 | Personal Capacitado | 2015-09-28 → 2015-09-30 (+2d) | 2015-09-28 → 2015-09-30 (+2d) |  |  | 16d → 15d |  |
| 69 | Prueba de integración final | 2015-10-13 → 2015-10-15 (+2d) | 2015-10-19 → 2015-10-21 (+2d) |  |  |  |  |
| 70 | Etapa 1 finalizada | 2015-10-19 → 2015-10-21 (+2d) | 2015-10-19 → 2015-10-21 (+2d) |  |  |  |  |
| 71 | Entrega producto | 2015-10-19 → 2015-10-21 (+2d) | 2015-10-19 → 2015-10-21 (+2d) |  |  |  |  |
