# Replanificación2

How a schedule from MS Project changed from version to version. A marks actual dates.

## Version 1 (data date 2015-09-25, saved 2015-09-25, file Replanificación2.mpp)

Note of the change: made some cleanup. Addded half finished courses for 2017-1 period (networking, tech project management, english and software construction)

| ID | WBS | Task | Duration | Start | Finish | Predecessors | Total float |
| --- | --- | --- | --- | --- | --- | --- | --- |
| 1 | 1 | **Etapa 1** | 27d | 2015-09-22 | 2015-10-19 |  | 0d |
| 2 | 1.1 | **Módulo Usuario** | 22d | 2015-09-22 | 2015-10-13 |  | 0d |
| 3 | 1.1.1 | **Diseño** | 9d | 2015-09-22 | 2015-09-30 |  | 0d |
| 4 | 1.1.1.1 | **Diseño preliminar aplicación** | 4d | 2015-09-22 | 2015-09-25 |  |  |
| 5 |  | Creación de ventanas | 3d | 2015-09-22 | 2015-09-23 |  | 0d |
| 6 |  | Comprobar coherencia con requisitos de interfaz | 1d | 2015-09-22 | 2015-09-22 |  | 2d |
| 7 |  | Diseño preliminar de aplicación terminado | 0d | 2015-09-23 | 2015-09-23 | 5, 6 | 0d |
| 8 | 1.1.1.2 | **Diseño vistas** | 3d | 2015-09-25 | 2015-09-29 | 4 | 0d |
| 9 |  | Diseño vista búsqueda | 3d | 2015-09-25 | 2015-09-29 |  | 0d |
| 10 |  | Diseño vista resultados | 3d | 2015-09-25 | 2015-09-29 |  | 0d |
| 11 |  | Diseño vistas terminado | 0d | 2015-09-29 | 2015-09-29 | 9, 10 | 0d |
| 12 |  | Validación Diseño y cambios | 2d | 2015-09-29 | 2015-09-30 | 8, 4 | 0d |
| 13 |  | Diseño terminado | 0d | 2015-09-30 | 2015-09-30 | 12 | 0d |
| 14 | 1.1.2 | **Implementación Interfaz** | 8d | 2015-09-30 | 2015-10-08 | 3 | 0d |
| 15 | 1.1.2.1 | **Implementación vista resultados** | 8d | 2015-09-30 | 2015-10-08 |  | 0d |
| 16 |  | Comunicación con servidor | 5d | 2015-09-30 | 2015-10-06 |  | 0d |
| 17 |  | Filtrado-Resultados | 5d | 2015-09-30 | 2015-10-06 |  | 0d |
| 18 |  | Look-and-feel | 4d | 2015-09-30 | 2015-10-05 |  | 1d |
| 19 |  | Testing, validación y cambios vista resultados | 3d | 2015-10-06 | 2015-10-08 | 16, 17, 18 | 0d |
| 20 |  | Vista resultados terminada | 0d | 2015-10-08 | 2015-10-08 | 19 | 0d |
| 21 | 1.1.2.2 | **Implementación vista busquedas** | 8d | 2015-09-30 | 2015-10-08 |  | 0d |
| 22 |  | Comunicación con servidor | 5d | 2015-09-30 | 2015-10-06 | 16SS | 0d |
| 23 |  | Selección filtros | 3d | 2015-09-30 | 2015-10-02 |  | 2d |
| 24 |  | Look-and-feel | 3d | 2015-09-30 | 2015-10-02 |  | 2d |
| 25 |  | Testing, validación y cambios vista busquedas | 3d | 2015-10-06 | 2015-10-08 | 22, 23, 24 | 0d |
| 26 |  | Vista busquedas terminada | 0d | 2015-10-08 | 2015-10-08 | 25 | 0d |
| 27 | 1.1.2.3 | **Implementación "Eye-candy"** | 5d | 2015-09-30 | 2015-10-06 |  | 3d |
| 28 |  | Splash Screen | 2d | 2015-09-30 | 2015-10-02 |  | 4d |
| 29 |  | Pantalla ayuda | 3d | 2015-09-30 | 2015-10-02 |  | 3d |
| 30 |  | Tool tips | 3d | 2015-09-30 | 2015-10-02 |  | 3d |
| 31 |  | Testing, validación y cambios "Eye-candy" | 2d | 2015-10-02 | 2015-10-06 | 28, 29, 30 | 3d |
| 32 |  | "Eye-candy" terminado | 0d | 2015-10-06 | 2015-10-06 | 31 | 3d |
| 33 |  | Validación y cambios a interfaz gráfica | 3d | 2015-10-08 | 2015-10-12 | 14 | 0d |
| 34 |  | Prueba de integración Interfaz | 2d | 2015-10-12 | 2015-10-13 | 33, 58 | 0d |
| 35 |  | Diseño e implementación interfaz gráfica terminada | 0d | 2015-10-13 | 2015-10-13 | 34 | 0d |
| 36 | 1.2 | **Módulo Servidor** | 18.83d | 2015-09-24 | 2015-10-13 |  | 0d |
| 37 | 1.2.1 | **Construcción base de datos** | 6d | 2015-09-24 | 2015-09-30 |  | 3.83d |
| 38 |  | Construcción DB | 2d | 2015-09-24 | 2015-09-25 |  | 3.83d |
| 39 |  | Poblar tablas con datos | 4d | 2015-09-25 | 2015-09-30 | 38 | 12.83d |
| 40 |  | Validación base de datos | 3d | 2015-09-25 | 2015-09-29 | 38 | 13.83d |
| 41 |  | Base de datos lista | 0d | 2015-09-30 | 2015-09-30 | 40, 39 | 12.83d |
| 42 | 1.2.2 | **Implementación servicio web** | 11.83d | 2015-09-25 | 2015-10-08 | 38 | 0d |
| 43 | 1.2.2.1 | **Conectar DB** | 6d | 2015-09-30 | 2015-10-06 |  | 2d |
| 44 | 1.2.2.1.1 | **Conexión módulo cliente** | 4d | 2015-09-30 | 2015-10-05 |  | 2d |
| 45 |  | Definir protocólo comunicación | 4d | 2015-09-30 | 2015-10-05 | 16SS | 2d |
| 46 |  | Establecer modelo datos | 4d | 2015-09-30 | 2015-10-05 | 45SS | 2d |
| 47 |  | Testing, validación y cambios conexión DB | 2d | 2015-10-05 | 2015-10-06 | 44 | 2d |
| 48 |  | Conexión DB termianda | 0d | 2015-10-06 | 2015-10-06 | 47 | 2d |
| 49 | 1.2.2.2 | **Implementación busquedas** | 8d | 2015-09-30 | 2015-10-08 | 21SS | 0d |
| 50 |  | Búsqueda por filtro (tag) | 6d | 2015-09-30 | 2015-10-06 |  | 0d |
| 51 |  | Búsqueda por fecha | 6d | 2015-09-30 | 2015-10-06 |  | 0d |
| 52 |  | Búsqueda por bloque libre | 6d | 2015-09-30 | 2015-10-06 |  | 0d |
| 53 |  | Testing, validación y cambios implementación busquedas | 2d | 2015-10-06 | 2015-10-08 | 50, 51, 52 | 0d |
| 54 |  | Sistema búsquedas terminado | 0d | 2015-10-08 | 2015-10-08 | 53 | 0d |
| 55 |  | Manejo excepciones | 6d | 2015-10-02 | 2015-10-08 | 49FF | 0d |
| 56 |  | Definición modelo de datos | 2d | 2015-09-25 | 2015-09-29 |  | 9.83d |
| 57 |  | Implementacion servicio web terminada | 0d | 2015-10-08 | 2015-10-08 | 43, 49, 55, 56 | 0d |
| 58 |  | Validación y cambios a servicios web y DB | 3d | 2015-10-08 | 2015-10-12 | 42 | 0d |
| 59 |  | Prueba de integración 2 (Conexión de DB e implementación de búsquedas ) | 2d | 2015-10-12 | 2015-10-13 | 58 | 0d |
| 60 |  | Diseño e implementación DB terminada | 0d | 2015-10-13 | 2015-10-13 | 59 | 0d |
| 61 | 1.3 | **Capacitaciones** | 9.17d | 2015-09-22 | 2015-09-30 |  | 12.83d |
| 62 |  | Uso de Git y GitHub | 1d | 2015-09-22 | 2015-09-22 | 2SS | 21d |
| 63 |  | Desarrollo de servicios web utilizando Java y GlassFish 1 | 1d | 2015-09-22 | 2015-09-22 | 2SS | 21d |
| 64 |  | Desarrollo de servicios web utilizando Java y GlassFish 2 | 1d | 2015-09-29 | 2015-09-30 | 37FF | 12.83d |
| 65 |  | Diseño de interfaces gráficas para JavaFX | 1d | 2015-09-22 | 2015-09-22 | 2SS | 21d |
| 66 |  | Uso de bases de datos SQLite en Java 1 | 1d | 2015-09-22 | 2015-09-22 | 2SS | 21d |
| 67 |  | Uso de bases de datos SQLite en Java 2 | 1d | 2015-09-29 | 2015-09-30 | 37FF | 12.83d |
| 68 |  | Personal Capacitado | 0d | 2015-09-30 | 2015-09-30 | 62, 63, 64, 65, 66, 67 | 12.83d |
| 69 |  | Prueba de integración final | 5d | 2015-10-13 | 2015-10-19 | 2, 36, 61 | 0d |
| 70 |  | Etapa 1 finalizada | 0d | 2015-10-19 | 2015-10-19 | 69 | 0d |

| ID | Task | Duration | Start | Finish | Predecessors | Total float |
| --- | --- | --- | --- | --- | --- | --- |
| 71 | Entrega producto | 0d | 2015-10-19 | 2015-10-19 | 70 | 0d |

## Version 2 (data date 2015-09-25, saved 2015-10-01, file Replanificación3.mpp)

Note of the change: made some cleanup. Addded half finished courses for 2017-1 period (networking, tech project management, english and software construction)

Last finish 2015-10-19 → 2015-10-21 (+2d). Complete tasks 0 → 4.

Changed:

| ID | Task | Start | Finish | Duration | Complete | Total float | Predecessors |
| --- | --- | --- | --- | --- | --- | --- | --- |
| 1 | **Etapa 1** | 2015-09-22 → 2015-09-24 A (+2d) | 2015-10-19 → 2015-10-21 (+2d) | 27d → 26d | 0% → 10% |  |  |
| 2 | **Módulo Usuario** | 2015-09-22 → 2015-09-24 A (+2d) | 2015-10-13 → 2015-10-15 (+2d) | 22d → 21d | 0% → 9% |  |  |
| 3 | **Diseño** | 2015-09-22 → 2015-09-24 A (+2d) | 2015-09-30 → 2015-10-02 (+2d) | 9d → 8d | 0% → 40% |  |  |
| 4 | **Diseño preliminar aplicación** | 2015-09-22 → 2015-09-24 A (+2d) | 2015-09-25 → 2015-09-28 (+3d) | 4d → 3d | 0% → 45% | none → 0d |  |
| 5 | Creación de ventanas | 2015-09-22 → 2015-09-24 A (+2d) | 2015-09-23 → 2015-09-28 (+5d) |  | 0% → 60% |  |  |
| 6 | Comprobar coherencia con requisitos de interfaz | 2015-09-22 → 2015-09-24 (+2d) | 2015-09-22 → 2015-09-25 (+3d) |  |  |  |  |
| 7 | Diseño preliminar de aplicación terminado | 2015-09-23 → 2015-09-28 (+5d) | 2015-09-23 → 2015-09-28 (+5d) |  |  |  |  |
| 8 | **Diseño vistas** | 2015-09-25 → 2015-09-28 A (+3d) | 2015-09-29 → 2015-09-30 (+1d) |  | 0% → 50% |  |  |
| 9 | Diseño vista búsqueda | 2015-09-25 → 2015-09-28 A (+3d) | 2015-09-29 → 2015-09-30 (+1d) |  | 0% → 60% |  |  |
| 10 | Diseño vista resultados | 2015-09-25 → 2015-09-28 A (+3d) | 2015-09-29 → 2015-09-30 (+1d) |  | 0% → 40% |  |  |
| 11 | Diseño vistas terminado | 2015-09-29 → 2015-09-30 (+1d) | 2015-09-29 → 2015-09-30 (+1d) |  |  |  |  |
| 12 | Validación Diseño y cambios | 2015-09-29 → 2015-09-30 (+1d) | 2015-09-30 → 2015-10-02 (+2d) |  |  |  |  |
| 13 | Diseño terminado | 2015-09-30 → 2015-10-02 (+2d) | 2015-09-30 → 2015-10-02 (+2d) |  |  |  |  |
| 14 | **Implementación Interfaz** | 2015-09-30 → 2015-10-02 A (+2d) | 2015-10-08 → 2015-10-12 (+4d) |  | 0% → 1% |  |  |
| 15 | **Implementación vista resultados** | 2015-09-30 → 2015-10-02 (+2d) | 2015-10-08 → 2015-10-12 (+4d) |  |  |  |  |
| 16 | Comunicación con servidor | 2015-09-30 → 2015-10-02 (+2d) | 2015-10-06 → 2015-10-07 (+1d) |  |  |  |  |
| 17 | Filtrado-Resultados | 2015-09-30 → 2015-10-02 (+2d) | 2015-10-06 → 2015-10-07 (+1d) |  |  |  |  |
| 18 | Look-and-feel | 2015-09-30 → 2015-10-02 (+2d) | 2015-10-05 → 2015-10-06 (+1d) |  |  |  |  |
| 19 | Testing, validación y cambios vista resultados | 2015-10-06 → 2015-10-07 (+1d) | 2015-10-08 → 2015-10-12 (+4d) |  |  |  |  |
| 20 | Vista resultados terminada | 2015-10-08 → 2015-10-12 (+4d) | 2015-10-08 → 2015-10-12 (+4d) |  |  |  |  |
| 21 | **Implementación vista busquedas** | 2015-09-30 → 2015-10-02 (+2d) | 2015-10-08 → 2015-10-12 (+4d) |  |  |  |  |
| 22 | Comunicación con servidor | 2015-09-30 → 2015-10-02 (+2d) | 2015-10-06 → 2015-10-07 (+1d) |  |  |  |  |
| 23 | Selección filtros | 2015-09-30 → 2015-10-02 (+2d) | 2015-10-02 → 2015-10-06 (+4d) |  |  |  |  |
| 24 | Look-and-feel | 2015-09-30 → 2015-10-02 (+2d) | 2015-10-02 → 2015-10-06 (+4d) |  |  |  |  |
| 25 | Testing, validación y cambios vista busquedas | 2015-10-06 → 2015-10-07 (+1d) | 2015-10-08 → 2015-10-12 (+4d) |  |  |  |  |
| 26 | Vista busquedas terminada | 2015-10-08 → 2015-10-12 (+4d) | 2015-10-08 → 2015-10-12 (+4d) |  |  |  |  |
| 27 | **Implementación "Eye-candy"** | 2015-09-30 → 2015-10-02 A (+2d) | 2015-10-06 → 2015-10-07 (+1d) |  | 0% → 6% |  |  |
| 28 | Splash Screen | 2015-09-30 → 2015-10-02 (+2d) | 2015-10-02 → 2015-10-05 (+3d) |  |  |  |  |
| 29 | Pantalla ayuda | 2015-09-30 → 2015-10-02 A (+2d) | 2015-10-02 → 2015-10-06 (+4d) |  | 0% → 20% |  |  |
| 30 | Tool tips | 2015-09-30 → 2015-10-02 (+2d) | 2015-10-02 → 2015-10-06 (+4d) |  |  |  |  |
| 31 | Testing, validación y cambios "Eye-candy" | 2015-10-02 → 2015-10-06 (+4d) | 2015-10-06 → 2015-10-07 (+1d) |  |  |  |  |
| 32 | "Eye-candy" terminado | 2015-10-06 → 2015-10-07 (+1d) | 2015-10-06 → 2015-10-07 (+1d) |  |  |  |  |
| 33 | Validación y cambios a interfaz gráfica | 2015-10-08 → 2015-10-12 (+4d) | 2015-10-12 → 2015-10-13 (+1d) |  |  |  |  |
| 34 | Prueba de integración Interfaz | 2015-10-12 → 2015-10-13 (+1d) | 2015-10-13 → 2015-10-15 (+2d) |  |  |  |  |
| 35 | Diseño e implementación interfaz gráfica terminada | 2015-10-13 → 2015-10-15 (+2d) | 2015-10-13 → 2015-10-15 (+2d) |  |  |  |  |
| 36 | **Módulo Servidor** | 2015-09-24 A | 2015-10-13 → 2015-10-15 (+2d) | 18.83d → 21d | 0% → 8% |  |  |
| 37 | **Construcción base de datos** | 2015-09-24 A |  |  | 0% → 49% | 3.83d → 4d |  |
| 38 | Construcción DB | 2015-09-24 A | 2015-09-25 → 2015-09-28 A (+3d) | 2d → 3d | 0% → 100% | 3.83d → none |  |
| 39 | Poblar tablas con datos | 2015-09-25 → 2015-09-28 (+3d) | 2015-09-30 → 2015-09-29 (-1d) | 4d → 2d |  | 12.83d → 5d |  |
| 40 | Validación base de datos | 2015-09-25 → 2015-09-28 A (+3d) | 2015-09-29 → 2015-09-30 (+1d) |  | 0% → 30% | 13.83d → 4d |  |
| 42 | **Implementación servicio web** | 2015-09-25 → 2015-09-28 (+3d) | 2015-10-08 → 2015-10-12 (+4d) | 11.83d → 13d |  |  |  |
| 45 | Definir protocólo comunicación |  |  |  |  | 2d → 4d | 16SS → 37 |
| 49 | **Implementación busquedas** | 2015-09-30 → 2015-10-02 (+2d) | 2015-10-08 → 2015-10-12 (+4d) |  |  |  |  |
| 50 | Búsqueda por filtro (tag) | 2015-09-30 → 2015-10-02 (+2d) | 2015-10-06 → 2015-10-08 (+2d) |  |  |  |  |
| 51 | Búsqueda por fecha | 2015-09-30 → 2015-10-02 (+2d) | 2015-10-06 → 2015-10-08 (+2d) |  |  |  |  |
| 52 | Búsqueda por bloque libre | 2015-09-30 → 2015-10-02 (+2d) | 2015-10-06 → 2015-10-08 (+2d) |  |  |  |  |
| 53 | Testing, validación y cambios implementación busquedas | 2015-10-06 → 2015-10-08 (+2d) | 2015-10-08 → 2015-10-12 (+4d) |  |  |  |  |
| 54 | Sistema búsquedas terminado | 2015-10-08 → 2015-10-12 (+4d) | 2015-10-08 → 2015-10-12 (+4d) |  |  |  |  |
| 55 | Manejo excepciones | 2015-10-02 → 2015-10-05 (+3d) | 2015-10-08 → 2015-10-12 (+4d) |  |  |  |  |
| 56 | Definición modelo de datos | 2015-09-25 → 2015-09-28 (+3d) |  |  |  | 9.83d → 11d |  |
| 57 | Implementacion servicio web terminada | 2015-10-08 → 2015-10-12 (+4d) | 2015-10-08 → 2015-10-12 (+4d) |  |  |  |  |
| 58 | Validación y cambios a servicios web y DB | 2015-10-08 → 2015-10-12 (+4d) | 2015-10-12 → 2015-10-13 (+1d) |  |  |  |  |
| 59 | Prueba de integración 2 (Conexión de DB e implementación de búsquedas ) | 2015-10-12 → 2015-10-13 (+1d) | 2015-10-13 → 2015-10-15 (+2d) |  |  |  |  |
| 60 | Diseño e implementación DB terminada | 2015-10-13 → 2015-10-15 (+2d) | 2015-10-13 → 2015-10-15 (+2d) |  |  |  |  |
| 61 | **Capacitaciones** | 2015-09-22 → 2015-09-24 A (+2d) |  | 9.17d → 6d | 0% → 50% | 12.83d → 15d |  |
| 62 | Uso de Git y GitHub | 2015-09-22 → 2015-09-24 A (+2d) | 2015-09-22 → 2015-09-25 A (+3d) |  | 0% → 100% | 21d → none |  |
| 63 | Desarrollo de servicios web utilizando Java y GlassFish 1 | 2015-09-22 → 2015-09-24 A (+2d) | 2015-09-22 → 2015-09-25 A (+3d) |  | 0% → 100% | 21d → none |  |
| 65 | Diseño de interfaces gráficas para JavaFX | 2015-09-22 → 2015-09-24 (+2d) | 2015-09-22 → 2015-09-25 (+3d) |  |  | 21d → 20d |  |
| 66 | Uso de bases de datos SQLite en Java 1 | 2015-09-22 → 2015-09-24 A (+2d) | 2015-09-22 → 2015-09-25 A (+3d) |  | 0% → 100% | 21d → none |  |
| 69 | Prueba de integración final | 2015-10-13 → 2015-10-15 (+2d) | 2015-10-19 → 2015-10-21 (+2d) |  |  |  |  |
| 70 | Etapa 1 finalizada | 2015-10-19 → 2015-10-21 (+2d) | 2015-10-19 → 2015-10-21 (+2d) |  |  |  |  |
| 71 | Entrega producto | 2015-10-19 → 2015-10-21 (+2d) | 2015-10-19 → 2015-10-21 (+2d) |  |  |  |  |
